WBS Code,Name,Level,Type,Parent WBS,Duration (Days),Start Date,Finish Date,Predecessors,Assigned Resources,Jira Epic / Issue Key,Monday / MS Project Mapping
01.00.00,SysML_Model (DEAP01-spec-core Program Root),1,Program,"",95.0,2026-06-01,2026-10-09,"",Master-Orchestrator,DEAP01-PROGRAM,SysML_Model (.pipeline/upstream/schema/model.sysml)
01.01.00,BP_01_Compiler_Enforced_Forbid_Lint_Gate_and_Zero_Suppression_AST_Architecture_Blueprint,2,Epic,01.00.00,5.0,2026-06-01,2026-06-05,"",Worker-BP01,EPIC-01,SysML_Model::BP_01_Compiler_Enforced_Forbid_Lint_Gate_and_Zero_Suppression_AST_Architecture_Blueprint
01.01.01,CompilerLintEnforcementGate,3,Task,01.01.00,1.0,2026-06-01,2026-06-01,"",Worker-BP01,FEAT-01,crates/verify-baseline/src/checks/codebase.rs
01.01.02,WorkspaceManifestForbidGate,3,Task,01.01.00,1.0,2026-06-02,2026-06-02,01.01.01,Worker-BP01,FEAT-02,Cargo.toml
01.01.03,ClippyAttributeCstParser (ClippyAttributeAstScanner),3,Task,01.01.00,1.0,2026-06-03,2026-06-03,01.01.02,Worker-BP01,FEAT-03,crates/verify-baseline/src/checks/codebase.rs
01.01.04,CrateRootAttributeSanitizer,3,Task,01.01.00,1.0,2026-06-04,2026-06-04,01.01.02,Worker-BP01,FEAT-04,crates/deap-core/src/lib.rs
01.01.05,TestTargetLintEnforcer,3,Task,01.01.00,1.0,2026-06-05,2026-06-05,01.01.03;01.01.04,Worker-BP01,FEAT-05,crates/verify-baseline/tests/codebase_checks_tests.rs
01.02.00,BP_02_Check_34_AST_Purity_Fail_Closed_IO_and_Anti_Gaming_Test_Gate_Blueprint,2,Epic,01.00.00,5.0,2026-06-08,2026-06-12,01.01.00,Worker-BP02,EPIC-02,SysML_Model::BP_02_Check_34_AST_Purity_Fail_Closed_IO_and_Anti_Gaming_Test_Gate_Blueprint
01.02.01,AntiGamingTestBodyAuditor,3,Task,01.02.00,1.0,2026-06-08,2026-06-08,01.01.05,Worker-BP02,FEAT-06,crates/verify-baseline/src/checks/codebase.rs
01.02.02,Check34AstPurityAndAntiGamingGate,3,Task,01.02.00,1.0,2026-06-09,2026-06-09,01.02.01,Worker-BP02,FEAT-07,crates/verify-baseline/src/checks/codebase.rs
01.02.03,FailClosedIoAstVerifier,3,Task,01.02.00,1.0,2026-06-10,2026-06-10,01.02.02,Worker-BP02,FEAT-08,crates/verify-baseline/src/checks/codebase.rs
01.02.04,RangeSliceAstDetector,3,Task,01.02.00,1.0,2026-06-11,2026-06-11,01.02.02,Worker-BP02,FEAT-09,crates/verify-baseline/src/checks/codebase.rs
01.02.05,SsotSymbolDeduplicationGate,3,Task,01.02.00,1.0,2026-06-12,2026-06-12,01.02.03;01.02.04,Worker-BP02,FEAT-10,crates/verify-baseline/src/checks/codebase.rs
01.03.00,BP_03_SysML_v2_AST_Bijective_Roundtrip_and_Token_Stream_Parser_Gate_Blueprint,2,Epic,01.00.00,5.0,2026-06-15,2026-06-19,01.02.00,Worker-BP03,EPIC-03,SysML_Model::BP_03_SysML_v2_AST_Bijective_Roundtrip_and_Token_Stream_Parser_Gate_Blueprint
01.03.01,BijectiveSysmlSerializer,3,Task,01.03.00,1.0,2026-06-17,2026-06-17,01.03.03,Worker-BP03,FEAT-11,crates/compile-sysml/src/semantic/serializer.rs
01.03.02,CompilerRoundtripVerificationGate,3,Task,01.03.00,1.0,2026-06-18,2026-06-18,01.03.01,Worker-BP03,FEAT-12,crates/compile-sysml/src/driver.rs
01.03.03,FailClosedRecursiveDescentParser,3,Task,01.03.00,1.0,2026-06-16,2026-06-16,01.03.04,Worker-BP03,FEAT-13,crates/compile-sysml/src/parser/mod.rs
01.03.04,NativeSigilAndLifetimeLexer,3,Task,01.03.00,1.0,2026-06-15,2026-06-15,01.02.05,Worker-BP03,FEAT-14,crates/deap-core/src/sysml_cst/mod.rs
01.03.05,SysmlBijectiveRoundtripCompilerGate,3,Task,01.03.00,1.0,2026-06-19,2026-06-19,01.03.02,Worker-BP03,FEAT-15,crates/deap-core/src/sysml_cst/mod.rs
01.04.00,BP_04_Deterministic_Specification_ICD_and_WBS_Forward_Compiler_Blueprint,2,Epic,01.00.00,5.0,2026-06-22,2026-06-26,01.03.00,Worker-BP04,EPIC-04,SysML_Model::BP_04_Deterministic_Specification_ICD_and_WBS_Forward_Compiler_Blueprint
01.04.01,AgileSpecForwardProjector,3,Task,01.04.00,1.0,2026-06-22,2026-06-22,01.03.05,Worker-BP04,FEAT-16,crates/compile-sysml/src/sync/mod.rs
01.04.02,BidirectionalBacklogReconciler,3,Task,01.04.00,1.0,2026-06-23,2026-06-23,01.04.01,Worker-BP04,FEAT-17,crates/reconcile-backlog/src/checklist.rs
01.04.03,DeterministicSpecIcdWbsForwardCompiler,3,Task,01.04.00,1.0,2026-06-24,2026-06-24,01.04.01,Worker-BP04,FEAT-18,crates/compile-sysml/src/sync/reverse.rs
01.04.04,LogicalIcdMatrixCompiler,3,Task,01.04.00,1.0,2026-06-25,2026-06-25,01.04.01,Worker-BP04,FEAT-19,crates/compile-sysml/src/driver.rs
01.04.05,MilStd881eWbsExporter,3,Task,01.04.00,1.0,2026-06-26,2026-06-26,01.04.02;01.04.03;01.04.04,Worker-BP04,FEAT-20,crates/compile-sysml/src/driver.rs
01.05.00,BP_05_Unified_AST_Safety_Docstring_Synthesizer_and_Check_36_Verification_Blueprint,2,Epic,01.00.00,5.0,2026-06-29,2026-07-03,01.04.00,Worker-BP05,EPIC-05,SysML_Model::BP_05_Unified_AST_Safety_Docstring_Synthesizer_and_Check_36_Verification_Blueprint
01.05.01,Check36AstCompletenessVerifier,3,Task,01.05.00,1.0,2026-07-02,2026-07-02,01.05.03,Worker-BP05,FEAT-21,crates/verify-baseline/src/checks/docstring_gate.rs
01.05.02,ScopedSchemaContextResolver,3,Task,01.05.00,1.0,2026-06-30,2026-06-30,01.05.04,Worker-BP05,FEAT-22,crates/compile-sysml/src/docstring.rs
01.05.03,SevenSectionDocstringGenerator,3,Task,01.05.00,1.0,2026-07-01,2026-07-01,01.05.02,Worker-BP05,FEAT-23,crates/compile-sysml/src/docstring.rs
01.05.04,UnifiedRustDartCstParser (UnifiedRustDartLexicalScanner),3,Task,01.05.00,1.0,2026-06-29,2026-06-29,01.04.05,Worker-BP05,FEAT-24,crates/deap-core/src/rust_cst/mod.rs
01.05.05,UnifiedSafetyDocstringSynthesizer,3,Task,01.05.00,1.0,2026-07-03,2026-07-03,01.05.01,Worker-BP05,FEAT-25,crates/compile-sysml/src/docstring.rs
01.06.00,BP_06_Deterministic_Static_5_Pillar_Code_Auditor_and_Defect_Dossier_Synthesizer_Blueprint,2,Epic,01.00.00,5.0,2026-07-06,2026-07-10,01.05.00,Worker-BP06,EPIC-06,SysML_Model::BP_06_Deterministic_Static_5_Pillar_Code_Auditor_and_Defect_Dossier_Synthesizer_Blueprint
01.06.01,ClosedLoopDefectPublisherGate,3,Task,01.06.00,1.0,2026-07-09,2026-07-09,01.06.02,Worker-BP06,FEAT-26,crates/verify-baseline/src/defect_dossier.rs
01.06.02,DeterministicDossierSynthesizer,3,Task,01.06.00,1.0,2026-07-08,2026-07-08,01.06.04;01.06.05,Worker-BP06,FEAT-27,crates/verify-baseline/src/defect_dossier.rs
01.06.03,DeterministicStaticDefectAuditor,3,Task,01.06.00,1.0,2026-07-10,2026-07-10,01.06.01,Worker-BP06,FEAT-28,crates/verify-baseline/src/audit_code.rs
01.06.04,FivePillarStaticAstAnalyzer,3,Task,01.06.00,1.0,2026-07-06,2026-07-06,01.05.05,Worker-BP06,FEAT-29,crates/verify-baseline/src/audit_code.rs
01.06.05,MermaidUmlDiagramGenerator,3,Task,01.06.00,1.0,2026-07-07,2026-07-07,01.05.05,Worker-BP06,FEAT-30,crates/verify-baseline/src/checks/mermaid.rs
01.07.00,BP_07_Self_Hosting_4_Level_Modular_Multi_File_Code_Generator_Blueprint,2,Epic,01.00.00,10.0,2026-07-13,2026-07-24,01.06.00,Worker-BP07,EPIC-07,SysML_Model::BP_07_Self_Hosting_4_Level_Modular_Multi_File_Code_Generator_Blueprint
01.07.01,ModularityBoundsSpec,3,Task,01.07.00,1.0,2026-07-13,2026-07-13,01.06.03,Worker-BP07,FEAT-31,crates/compile-sysml/src/modular_codegen/domain/bounds.rs
01.07.02,LayerHierarchySpec,3,Task,01.07.00,1.0,2026-07-14,2026-07-14,01.07.01,Worker-BP07,FEAT-32,crates/compile-sysml/src/modular_codegen/domain/layer_role.rs
01.07.03,CompilationUnitSpec,3,Task,01.07.00,1.0,2026-07-15,2026-07-15,01.07.02,Worker-BP07,FEAT-33,crates/compile-sysml/src/modular_codegen/domain/module_graph.rs
01.07.04,FourLevelLoweringEngineSpec,3,Task,01.07.00,1.0,2026-07-16,2026-07-16,01.07.03,Worker-BP07,FEAT-34,crates/compile-sysml/src/modular_codegen/lowering/mod.rs
01.07.05,ModularEmitterSuiteSpec,3,Task,01.07.00,1.0,2026-07-17,2026-07-17,01.07.04,Worker-BP07,FEAT-35,crates/compile-sysml/src/modular_codegen/emitters/mod.rs
01.07.06,FourLevelAstPartitionerAndHoister,3,Task,01.07.00,1.0,2026-07-20,2026-07-20,01.07.04,Worker-BP07,FEAT-36 (FEAT-31),crates/compile-sysml/src/modular_codegen/lowering/partitioner.rs
01.07.07,ModularFlutterMultiFileEmitter,3,Task,01.07.00,1.0,2026-07-21,2026-07-21,01.07.05;01.07.06,Worker-BP07,FEAT-37 (FEAT-32),crates/compile-sysml/src/modular_codegen/emitters/flutter/mod.rs
01.07.08,ModularRustMultiFileEmitter,3,Task,01.07.00,1.0,2026-07-22,2026-07-22,01.07.05;01.07.06,Worker-BP07,FEAT-38 (FEAT-33),crates/compile-sysml/src/modular_codegen/emitters/rust_emitter.rs
01.07.09,SelfHostingModularCodegenCompiler,3,Task,01.07.00,1.0,2026-07-24,2026-07-24,01.07.08;01.07.10,Worker-BP07,FEAT-39 (FEAT-34),crates/compile-sysml/src/modular_codegen/generated/mod.rs
01.07.10,TopologicalLayerDagVerifier,3,Task,01.07.00,1.0,2026-07-23,2026-07-23,01.07.03,Worker-BP07,FEAT-40 (FEAT-35),crates/compile-sysml/src/modular_codegen/lowering/dag_verifier.rs
01.08.00,BP_08_Lossless_Rust_CST_Codemod_Engine_and_Unified_rustc_Compatible_JSON_Diagnostics,2,Epic,01.00.00,22.0,2026-07-27,2026-08-25,01.07.00,Worker-Track1,EPIC-08,SysML_Model::BP_08_Lossless_Rust_CST_Codemod_Engine_and_Unified_rustc_Compatible_JSON_Diagnostics
01.08.01,AirGappedCargoLockGovernor,3,Task,01.08.00,4.0,2026-07-27,2026-07-30,01.07.09,Worker-Track1,FEAT-41 (FEAT-36),crates/deap-core/src/workspace/mod.rs
01.08.01.01,"[TD-01] LockManifestSnapshot and parse_locked_manifest_snapshot",4,Sub-task,01.08.01,1.0,2026-07-27,2026-07-27,01.07.09,Subagent-TD-01,TD-01,crates/deap-core/src/workspace.rs
01.08.01.02,"[TD-02] verify_pinned_cst_dependency_graph blocking ra_ap_hir",4,Sub-task,01.08.01,1.0,2026-07-28,2026-07-28,01.08.01.01,Subagent-TD-02,TD-02,crates/deap-core/src/workspace.rs
01.08.01.03,"[TD-03] verify_analyzer_envelope_and_seal_receipt",4,Sub-task,01.08.01,1.0,2026-07-29,2026-07-29,01.08.01.02,Subagent-TD-03,TD-03,crates/deap-core/src/source_ast.rs
01.08.01.04,"[TD-13] run_offline_locked_workspace_gate and DEAP-E0804 NDJSON",4,Sub-task,01.08.01,1.0,2026-08-12,2026-08-12,01.08.01.03;01.08.04.04,Subagent-TD-13,TD-13,crates/verify-baseline/src/blueprint_gate.rs
01.08.02,LosslessRustCstAnalyzer,3,Task,01.08.00,5.0,2026-07-30,2026-08-05,01.08.01.03,Worker-Track1,FEAT-42 (FEAT-37),crates/deap-core/src/rust_cst/mod.rs
01.08.02.01,"[TD-04] CstMetricsThresholds CstMetricsError and validate_metrics_thresholds",4,Sub-task,01.08.02,1.0,2026-07-30,2026-07-30,01.08.01.03,Subagent-TD-04,TD-04,crates/deap-core/src/source_ast.rs
01.08.02.02,"[TD-05] VerifiedLosslessCst and parse_verified_lossless_cst MAX_AST_DEPTH 64",4,Sub-task,01.08.02,1.0,2026-07-31,2026-07-31,01.08.02.01,Subagent-TD-05,TD-05,crates/deap-core/src/source_ast.rs
01.08.02.03,"[TD-06] DocTier and classify_cfg_test_excluded_doc_tier",4,Sub-task,01.08.02,1.0,2026-08-03,2026-08-03,01.08.02.02,Subagent-TD-06,TD-06,crates/deap-core/src/source_ast.rs
01.08.02.04,"[TD-07] FnAstMetrics and analyze_cst_v2_metrics",4,Sub-task,01.08.02,1.0,2026-08-04,2026-08-04,01.08.02.03,Subagent-TD-07,TD-07,crates/deap-core/src/source_ast.rs
01.08.02.05,"[TD-12] evaluate_metrics_and_format_ndjson",4,Sub-task,01.08.02,1.0,2026-08-11,2026-08-11,01.08.02.04;01.08.04.04,Subagent-TD-12,TD-12,crates/deap-core/src/source_ast.rs
01.08.03,StructuredModularCodegenSynthesizer,3,Task,01.08.00,3.0,2026-08-21,2026-08-25,01.08.05.06,Worker-Track1,FEAT-43 (FEAT-38),crates/compile-sysml/src/modular_codegen/emitters/rust_emitter.rs
01.08.03.01,"[TD-20] StageTreeDigestManifest FixedPointSynthesisError and verify_cfg_test_excluded_doc_tiers",4,Sub-task,01.08.03,1.0,2026-08-21,2026-08-21,01.08.05.06,Subagent-TD-20,TD-20,crates/compile-sysml/src/modular_codegen/emitters/rust_emitter.rs
01.08.03.02,"[TD-21] synthesize_prettyplease_unit E0705-preserving AST emission",4,Sub-task,01.08.03,1.0,2026-08-24,2026-08-24,01.08.03.01,Subagent-TD-21,TD-21,crates/compile-sysml/src/modular_codegen/emitters/rust_emitter.rs
01.08.03.03,"[TD-22] verify_stage_fixed_point Stage-1 equals Stage-2 SHA-256",4,Sub-task,01.08.03,1.0,2026-08-25,2026-08-25,01.08.04.04;01.08.03.02,Subagent-TD-22,TD-22,crates/compile-sysml/src/modular_codegen/mod.rs
01.08.04,UnifiedRustcJsonDiagnosticEmitter,3,Task,01.08.00,4.0,2026-08-05,2026-08-10,01.08.02.02,Worker-Track1,FEAT-44 (FEAT-39),crates/deap-core/src/diagnostics.rs
01.08.04.01,"[TD-08] RustcCompilerMessageEnvelope and resolve_utf8_span",4,Sub-task,01.08.04,1.0,2026-08-05,2026-08-05,01.08.02.02,Subagent-TD-08,TD-08,crates/deap-core/src/diagnostics.rs
01.08.04.02,"[TD-09] format_ndjson_line single-line zero-ANSI serializer",4,Sub-task,01.08.04,1.0,2026-08-06,2026-08-06,01.08.04.01,Subagent-TD-09,TD-09,crates/deap-core/src/diagnostics.rs
01.08.04.03,"[TD-10] apply_machine_applicable_fixes reverse-byte-order splicer",4,Sub-task,01.08.04,1.0,2026-08-07,2026-08-07,01.08.02.04;01.08.04.02,Subagent-TD-10,TD-10,crates/deap-core/src/diagnostics.rs
01.08.04.04,"[TD-11] emit_cli_ndjson_stream across all 5 CLIs",4,Sub-task,01.08.04,1.0,2026-08-10,2026-08-10,01.08.04.03,Subagent-TD-11,TD-11,crates/deap-core/src/diagnostics.rs
01.08.05,ZeroTokenRustSpanCodemodEngine,3,Task,01.08.00,6.0,2026-08-13,2026-08-20,01.08.02.04,Worker-Track1,FEAT-45 (FEAT-40),crates/deap-core/src/rust_cst/mod.rs
01.08.05.01,"[TD-14] RustItemInventory and list_rust_cst_items BTreeMap",4,Sub-task,01.08.05,1.0,2026-08-13,2026-08-13,01.08.02.03;01.08.02.04,Subagent-TD-14,TD-14,crates/deap-core/src/source_ast.rs
01.08.05.02,"[TD-15] emit_rust_item_inventory --list-rust-items CLI wiring",4,Sub-task,01.08.05,1.0,2026-08-14,2026-08-14,01.08.04.04;01.08.05.01,Subagent-TD-15,TD-15,crates/compile-sysml/src/driver.rs
01.08.05.03,"[TD-16] CodemodError and inventory_extractable_items",4,Sub-task,01.08.05,1.0,2026-08-17,2026-08-17,01.08.05.01,Subagent-TD-16,TD-16,crates/deap-core/src/source_ast.rs
01.08.05.04,"[TD-17] SpanSpliceEdit and splice_disjoint_reverse_spans",4,Sub-task,01.08.05,1.0,2026-08-18,2026-08-18,01.08.05.03,Subagent-TD-17,TD-17,crates/deap-core/src/source_ast.rs
01.08.05.05,"[TD-18] extract_rust_module_atomic and Check-37 blueprint citation rewriter",4,Sub-task,01.08.05,1.0,2026-08-19,2026-08-19,01.08.05.02;01.08.05.04,Subagent-TD-18,TD-18,crates/deap-core/src/workspace.rs
01.08.05.06,"[TD-19] compact_tier_bc_tree skipping modular_codegen/generated",4,Sub-task,01.08.05,1.0,2026-08-20,2026-08-20,01.08.05.05,Subagent-TD-19,TD-19,crates/compile-sysml/src/docstring.rs
01.09.00,BP_09_Multi_Stage_Compiler_and_Formal_Verification_Gatekeeper,2,Epic,01.00.00,14.0,2026-08-26,2026-09-14,01.08.00,Worker-BP09,EPIC-09,SysML_Model::BP_09_Multi_Stage_Compiler_and_Formal_Verification_Gatekeeper
01.09.01,FrbIcdBridgeAndMiriUbGate,3,Task,01.09.00,3.0,2026-08-28,2026-09-01,01.09.05.02,Worker-Wave2,FEAT-46 (FEAT-41),crates/verify-baseline/src/checks/formal_stage3_4_miri_kani.rs
01.09.02,IsolatedDylintMirAllocationGate,3,Task,01.09.00,3.0,2026-09-02,2026-09-04,01.09.05.02,Worker-Wave2,FEAT-47 (FEAT-42),.pipeline/upstream/docs/features/FEAT-47-IsolatedDylintMirAllocationGate.md
01.09.03,KaniCbmcProofSynthesizer,3,Task,01.09.00,3.0,2026-09-07,2026-09-09,01.09.05.02,Worker-Wave2,FEAT-48 (FEAT-43),.pipeline/upstream/docs/features/FEAT-48-KaniCbmcProofSynthesizer.md
01.09.04,MultiStageVerificationOrchestrator,3,Task,01.09.00,3.0,2026-09-10,2026-09-14,01.09.01;01.09.02;01.09.03,Worker-Wave2,FEAT-49 (FEAT-44),crates/verify-baseline/src/runner.rs
01.09.05,StableClippyTotalFunctionGate,3,Task,01.09.00,2.0,2026-08-26,2026-08-27,01.08.03.03,Worker-Track1,FEAT-50 (FEAT-45),crates/verify-baseline/src/clippy_gate.rs
01.09.05.01,"[TD-23] ClippyGateError validate_manifest_and_clippy_bundle and filter_clippy_ndjson_stream",4,Sub-task,01.09.05,1.0,2026-08-26,2026-08-26,01.08.02.05;01.08.01.04;01.08.03.03,Subagent-TD-23,TD-23,crates/verify-baseline/src/clippy_gate.rs
01.09.05.02,"[TD-24] run_stable_clippy_gate 14-lint workspace.lints.clippy and clippy.toml",4,Sub-task,01.09.05,1.0,2026-08-27,2026-08-27,01.09.05.01,Subagent-TD-24,TD-24,Cargo.toml
01.10.00,BP_10_Incremental_Lossless_SysML_v2_and_Polyglot_Compiler_Engine,2,Epic,01.00.00,12.0,2026-09-15,2026-09-30,01.09.05.02,Worker-Wave2,EPIC-10,SysML_Model::BP_10_Incremental_Lossless_SysML_v2_and_Polyglot_Compiler_Engine
01.10.01,FormattingPreservingSyncSplicer,3,Task,01.10.00,3.0,2026-09-25,2026-09-30,01.10.02;01.10.03,Worker-Wave2,FEAT-51 (FEAT-46),crates/compile-sysml/src/sync/mod.rs
01.10.02,LogosRowanSysmlCstEngine,3,Task,01.10.00,3.0,2026-09-15,2026-09-17,01.09.05.02,Worker-Wave2,FEAT-52 (FEAT-47),crates/deap-core/src/sysml_cst/mod.rs
01.10.03,SalsaIncrementalCompilerDatabase,3,Task,01.10.00,3.0,2026-09-18,2026-09-22,01.10.02,Worker-Wave2,FEAT-53 (FEAT-48),crates/deap-core/src/sysml_cst/salsa_db.rs
01.10.04,TypedPolyglotIngestionFrontend,3,Task,01.10.00,3.0,2026-09-23,2026-09-25,01.10.02,Worker-Wave2,FEAT-54 (FEAT-49),crates/ingest-sysml/src/translators/mod.rs
01.11.00,BP_11_Ferrocene_Qualified_Toolchain_FLS_Traceability_Structural_Coverage_and_3_Ring_Rust_Flutter_DO_178C_DO_330_Certification_Architecture,2,Epic,01.00.00,12.0,2026-09-28,2026-10-09,01.09.05.02,Worker-Wave2,EPIC-11,SysML_Model::BP_11_Ferrocene_Qualified_Toolchain_FLS_Traceability_Structural_Coverage_and_3_Ring_Rust_Flutter_DO_178C_DO_330_Certification_Architecture
01.11.01,CertifiedCoreSubsetAndCoverageGate,3,Task,01.11.00,3.0,2026-10-01,2026-10-05,01.11.02,Worker-Wave2,FEAT-55 (FEAT-50),.pipeline/upstream/docs/features/FEAT-55-CertifiedCoreSubsetAndCoverageGate.md
01.11.02,DualModeFerroceneToolchainGate,3,Task,01.11.00,3.0,2026-09-28,2026-09-30,01.09.05.02,Worker-Wave2,FEAT-56 (FEAT-51),.pipeline/upstream/docs/features/FEAT-56-DualModeFerroceneToolchainGate.md
01.11.03,FlsParagraphTraceabilitySynthesizer,3,Task,01.11.00,3.0,2026-10-02,2026-10-06,01.11.02,Worker-Wave2,FEAT-57 (FEAT-52),crates/deap-core/src/workspace/ferrocene_gate.rs
01.11.04,ThreeRingAssurancePartitionCompiler,3,Task,01.11.00,3.0,2026-10-07,2026-10-09,01.11.01;01.11.03,Worker-Wave2,FEAT-58 (FEAT-53),.pipeline/upstream/docs/features/FEAT-58-ThreeRingAssurancePartitionCompiler.md
